# Lehong 2019

How a schedule from MS Project changed from version to version. A marks actual dates.

## Version 1 (saved 2019-03-13)

Note of the change: Arranging files

| ID | WBS | Task | Duration | Start | Finish | Predecessors | Total float | Constraint |
| --- | --- | --- | --- | --- | --- | --- | --- | --- |
| 1 | 1 | **Lehong 2019** | 264d | 2018-03-01 | 2019-03-05 |  | 0d | start no earlier than 2018-03-01 |
| 2 | 1.1 | **Planning** | 51d | 2018-03-01 | 2018-05-10 |  | 0d |  |
| 3 |  | Deciding on Project Concept | 1d | 2018-03-01 | 2018-03-01 |  | 0d | must start on 2018-03-01 |
| 4 |  | Concept Review | 2d | 2018-03-02 | 2018-03-05 | 3 | 3d | start no earlier than 2018-03-02 |
| 5 |  | Determining Budget | 7d | 2018-03-02 | 2018-03-12 | 3 | 0d | must start on 2018-03-02 |
| 6 |  | Engage Contractors | 40d | 2018-03-09 | 2018-05-03 | 4 | 0d | must start on 2018-03-09 |
| 7 |  | Quantify space requirements | 7d | 2018-03-09 | 2018-03-19 | 3 | 0d | must start on 2018-03-09 |
| 8 |  | Contractor Negotiations | 40d | 2018-03-16 | 2018-05-10 | 5, 6 | -35d | must start on 2018-03-16 |
| 9 | 1.2 | **Project Management** | 40d | 2018-05-04 | 2018-06-28 |  | -1d |  |
| 10 |  | Communication Strategy | 1d | 2018-05-04 | 2018-05-04 | 4 | -1d | start no earlier than 2018-05-04 |
| 11 |  | Support Services | 39d | 2018-05-07 | 2018-06-28 | 10 | 178d | start no earlier than 2018-05-04 |
| 12 | 1.3 | **Design** | 40d | 2018-05-04 | 2018-06-28 |  | 0d |  |
| 13 |  | Industrial Design | 40d | 2018-05-04 | 2018-06-28 | 10 | -1d | must start on 2018-05-04 |
| 14 |  | Mechanical Design | 40d | 2018-05-04 | 2018-06-28 | 10 | -1d | must start on 2018-05-04 |
| 15 |  | Production line control software program | 40d | 2018-05-04 | 2018-06-28 | 10 | -1d | must start on 2018-05-04 |
| 16 |  | Production train design | 40d | 2018-05-04 | 2018-06-28 | 10 | -1d | must start on 2018-05-04 |
| 17 | 1.4 | **Preconstruction** | 37d | 2018-06-11 | 2018-07-31 |  | -3d |  |
| 18 |  | Waste Acceptance Criteria | 15d | 2018-06-29 | 2018-07-19 | 13 | -3d | start no earlier than 2018-06-08 |
| 19 |  | Quality Assurance | 10d | 2018-06-29 | 2018-07-12 | 13, 14, 15, 16 | 2d | start no earlier than 2018-06-29 |
| 20 |  | Subcontractor Training | 20d | 2018-06-11 | 2018-07-06 | 8 | 6d | start no earlier than 2018-06-11 |
| 21 |  | Readiness Review | 8d | 2018-07-20 | 2018-07-31 | 18, 19, 20 | -3d | start no earlier than 2018-06-25 |
| 22 | 1.5 | **Construction** | 155d | 2018-06-29 | 2019-01-31 |  | 0d |  |
| 23 |  | Site-clearing | 20d | 2018-06-29 | 2018-07-26 | 7 | 0d | must start on 2018-06-29 |
| 24 |  | Building of Facility | 70d | 2018-07-27 | 2018-11-01 | 21, 23 | -3d | must start on 2018-07-27 |
| 25 |  | Install semi-automatic woodworking production train | 20d | 2018-11-02 | 2018-11-29 | 16, 24 | 0d | must start on 2018-11-02 |
| 26 |  | Paint shop installation | 15d | 2018-11-30 | 2018-12-20 | 14, 24 | 40d | start no earlier than 2018-11-30 |
| 27 |  | Hardware Installation | 10d | 2018-12-21 | 2019-01-03 | 24 | 0d | must start on 2018-12-21 |
| 28 |  | Software Installation | 5d | 2019-01-04 | 2019-01-10 | 15, 25 | 0d | must start on 2019-01-04 |
| 29 |  | Install compressor | 5d | 2019-01-11 | 2019-01-17 | 24 | 0d | must start on 2019-01-11 |
| 30 |  | Install Air-conditioning | 10d | 2019-01-18 | 2019-01-31 | 24 | 0d | must start on 2019-01-18 |
| 31 | 1.6 | **Final Inspection** | 17d | 2019-02-04 | 2019-02-26 |  | 0d |  |
| 32 |  | Complete production train inspection | 5d | 2019-02-04 | 2019-02-08 | 25 | 9d | start no earlier than 2019-02-04 |
| 33 |  | Paint shop inspection | 5d | 2019-02-11 | 2019-02-15 | 26 | 4d | start no earlier than 2019-02-11 |
| 34 |  | Building Inspection | 4d | 2019-02-18 | 2019-02-21 | 24 | 0d | start no earlier than 2019-02-16 |
| 35 |  | Final approval | 3d | 2019-02-22 | 2019-02-26 | 32, 33, 34 | 0d | start no earlier than 2019-02-22 |
| 36 | 1.7 | **Safety and Environment** | 153d | 2018-07-27 | 2019-02-26 |  | 0d |  |
| 37 |  | Safety Analysis Report | 153d | 2018-07-27 | 2019-02-26 |  | 0d | start no earlier than 2018-07-27 |
| 38 |  | Probabilistic Risk Assessment | 153d | 2018-07-27 | 2019-02-26 |  | 0d | start no earlier than 2018-07-27 |
| 39 | 1.8 | **Commissioning** | 5d | 2019-02-27 | 2019-03-05 |  | 0d |  |
| 40 |  | Production start-up | 5d | 2019-02-27 | 2019-03-05 | 35, 37, 38 | 0d | finish no earlier than 2019-03-01 |

## Version 2 (saved 2019-04-02)

Note of the change: HAHAHAAHAHA

Last finish 2019-03-05 → 2019-03-01 (-4d).

Added:

| ID | Task | Duration | Start | Finish | Resources |
| --- | --- | --- | --- | --- | --- |
| 17 | **Mechanical Design** | 40d | 2018-05-04 | 2018-06-28 |  |
| 25 | Site-clearing permission | 1d | 2018-03-01 | 2018-03-01 |  |
| 28 | **Building of Facility** | 1d | 2018-06-29 | 2018-06-29 | Daniel Lee; Justine Leakey; Derek Rivett; Manzi Nisela |
| 29 | Foundation | 1d | 2018-06-29 | 2018-06-29 |  |
| 30 | Structures | 1d | 2018-06-29 | 2018-06-29 |  |
| 31 | Roofing | 1d | 2018-06-29 | 2018-06-29 |  |
| 32 | Water Proofing | 1d | 2018-06-29 | 2018-06-29 |  |
| 33 | Building Electrification | 1d | 2018-06-29 | 2018-06-29 |  |
| 34 | **Installation** | 59d | 2018-11-02 | 2019-01-23 |  |

Removed: 14 Mechanical Design; 24 Building of Facility

Changed:

| ID | Task | Start | Finish | Duration | Total float | Predecessors | Other |
| --- | --- | --- | --- | --- | --- | --- | --- |
| 1 | **Lehong 2019** |  | 2019-03-05 → 2019-03-01 (-4d) | 264d → 262d |  |  |  |
| 2 | **Planning** |  | 2018-05-10 → 2018-07-05 (+56d) | 51d → 91d |  |  |  |
| 3 | Deciding on Project Concept |  | 2018-03-01 → 2018-03-09 (+8d) | 1d → 7d |  |  |  |
| 4 | Concept Review |  |  |  | 3d → 259d | 3 → none |  |
| 5 | Determining Budget |  | 2018-03-12 → 2018-03-21 (+9d) | 7d → 14d |  | 3 → none |  |
| 6 | **Engage Contractors** |  | 2018-05-03 → 2018-07-05 (+63d) | 40d → 85d |  | 4 → none | constraint must start on 2018-03-09 → start no earlier than 2018-03-09; resources Blantina Morake → none |
| 7 | Quantify space requirements |  |  |  |  | 3 → none |  |
| 8 | Contractor Negotiations |  | 2018-05-10 → 2018-07-05 (+56d) | 40d → 80d | -35d → 0d | 5, 6 → none | resources Sylvia More → Sylvia More; Blantina Morake |
| 9 | **Project Management** |  | 2018-06-28 → 2018-06-27 (-1d) | 40d → 39d | -1d → 177d |  |  |
| 10 | Communication Strategy |  |  |  | -1d → 215d | 4 → none | resources Project Support Officer → Emilia Mohapi |
| 11 | Support Services | 2018-05-07 → 2018-05-04 (-3d) | 2018-06-28 → 2018-06-27 (-1d) |  | 178d → 177d | 10 → none |  |
| 16 | Industrial Design |  |  |  | -1d → 0d | 10 → none |  |
| 18 | Production line control software program |  |  |  | -1d → 0d | 10 → none |  |
| 19 | Production train design |  |  |  | -1d → 0d | 10 → none |  |
| 20 | **Preconstruction** | 2018-06-11 → 2018-03-01 (-102d) | 2018-07-31 → 2018-07-18 (-13d) | 37d → 100d | -3d → 162d |  |  |
| 21 | Waste Acceptance Criteria | 2018-06-29 → 2018-06-08 (-21d) | 2018-07-19 → 2018-06-28 (-21d) |  | -3d → 176d | 16 → none |  |
| 22 | Quality Assurance | 2018-06-29 → 2018-06-18 (-11d) | 2018-07-12 → 2018-06-29 (-13d) |  | 2d → 175d | 16, Mechanical Design, 18, 19 → none | constraint start no earlier than 2018-06-29 → start no earlier than 2018-06-17 |
| 23 | Subcontractor Training |  | 2018-07-06 → 2018-07-18 (+12d) | 20d → 28d | 6d → 162d | 8 → none |  |
| 24 | Readiness Review | 2018-07-20 → 2018-07-09 (-11d) | 2018-07-31 → 2018-07-18 (-13d) |  | -3d → 162d | 21, 22, 23 → none | constraint start no earlier than 2018-06-25 → start no earlier than 2018-07-08 |
| 26 | **Construction** |  | 2019-01-31 → 2018-07-26 (-189d) | 155d → 20d |  |  | constraint none → start no earlier than 2018-06-29 |
| 27 | Site-clearing |  |  |  |  | 7 → none |  |
| 35 | Install semi-automatic woodworking production train |  | 2018-11-29 → 2018-12-27 (+28d) | 20d → 40d |  | 19, Building of Facility → none |  |
| 36 | Paint shop installation |  |  |  | 40d → 51d | Mechanical Design, Building of Facility → none |  |
| 37 | Hardware Installation |  |  |  |  | Building of Facility → none |  |
| 38 | Software Installation |  |  |  |  | 18, 35 → none |  |
| 39 | Install compressor |  | 2019-01-17 → 2019-01-16 (-1d) | 5d → 4d |  | Building of Facility → none |  |
| 40 | Install Air-conditioning |  | 2019-01-31 → 2019-01-23 (-8d) | 10d → 4d |  | Building of Facility → none |  |
| 42 | Complete production train inspection |  |  |  | 9d → 15d | 35 → none |  |
| 43 | Paint shop inspection |  |  |  | 4d → 10d | 36 → none |  |
| 44 | Building Inspection |  |  |  | 0d → 6d | Building of Facility → none |  |
| 45 | Final approval |  |  |  | 0d → 3d | 42, 43, 44 → none |  |
| 46 | **Commissioning** | 2019-02-27 → 2019-02-25 (-2d) | 2019-03-05 → 2019-03-01 (-4d) |  |  |  |  |
| 47 | Production start-up | 2019-02-27 → 2019-02-25 (-2d) | 2019-03-05 → 2019-03-01 (-4d) |  |  | 45, 13, 14 → none |  |

## Version 3 (saved 2019-04-03)

Note of the change: Adding Resource Usage

Last finish 2019-03-01 → 2019-03-26 (+25d).

Changed:

| ID | Task | Start | Finish | Duration | Total float | Predecessors | Other |
| --- | --- | --- | --- | --- | --- | --- | --- |
| 1 | **Lehong 2019** |  | 2019-03-01 → 2019-03-26 (+25d) | 262d → 279d |  |  |  |
| 2 | **Planning** |  | 2018-07-05 → 2018-05-31 (-35d) | 91d → 66d |  |  |  |
| 4 | Concept Review | 2018-03-02 → 2018-03-12 (+10d) | 2018-03-05 → 2018-03-16 (+11d) | 2d → 5d | 259d → 54d | none → 3 | constraint start no earlier than 2018-03-02 → start no earlier than 2018-03-12 |
| 5 | Determining Budget | 2018-03-02 → 2018-03-12 (+10d) | 2018-03-21 → 2018-03-29 (+8d) |  | 0d → 10d | none → 3 | constraint must start on 2018-03-02 → start no earlier than 2018-03-12 |
| 6 | **Engage Contractors** | 2018-03-09 → 2018-04-06 (+28d) | 2018-07-05 → 2018-05-31 (-35d) | 85d → 40d | 0d → 5d |  |  |
| 7 | Quantify space requirements | 2018-03-09 → 2018-04-06 (+28d) | 2018-03-19 → 2018-04-12 (+24d) | 7d → 5d | 0d → 125d | none → 3 | constraint must start on 2018-03-09 → start no earlier than 2018-04-06 |
| 8 | Contractor Negotiations | 2018-03-16 → 2018-04-13 (+28d) | 2018-07-05 → 2018-05-31 (-35d) | 80d → 35d |  | none → 5 | constraint must start on 2018-03-16 → start no earlier than 2018-04-13 |
| 9 | **Project Management** | 2018-05-04 → 2018-06-01 (+28d) | 2018-06-27 → 2018-07-26 (+29d) | 39d → 40d | 177d → 10d |  |  |
| 10 | Communication Strategy | 2018-05-04 → 2018-06-01 (+28d) | 2018-05-04 → 2018-06-07 (+34d) | 1d → 5d | 215d → 10d | none → 8 | constraint start no earlier than 2018-05-04 → start no earlier than 2018-05-20 |
| 11 | Support Services | 2018-05-04 → 2018-06-01 (+28d) | 2018-06-27 → 2018-07-26 (+29d) | 39d → 40d | 177d → 20d | none → 8 | constraint start no earlier than 2018-05-04 → start no earlier than 2018-05-20 |
| 12 | **Safety and Environment** | 2018-07-27 → 2018-06-01 (-56d) | 2019-02-26 → 2018-06-21 (-250d) | 153d → 15d | 3d → 0d |  |  |
| 13 | Safety Analysis Report | 2018-07-27 → 2018-06-01 (-56d) | 2019-02-26 → 2018-06-21 (-250d) | 153d → 15d | 3d → 0d | none → 4, 5, 8 | constraint start no earlier than 2018-07-27 → start no earlier than 2018-03-04; resources Safety Analyst → Kabelo Mohapi |
| 14 | Probabilistic Risk Assessment | 2018-07-27 → 2018-06-01 (-56d) | 2019-02-26 → 2018-06-21 (-250d) | 153d → 15d | 3d → 0d | none → 4, 5, 8 | constraint start no earlier than 2018-07-27 → start no earlier than 2018-02-11; resources Risk Analyst → Neo Mohapi |
| 15 | **Design** | 2018-05-04 → 2018-06-22 (+49d) | 2018-06-28 → 2018-08-16 (+49d) |  |  | none → 10 |  |
| 16 | Industrial Design | 2018-05-04 → 2018-06-22 (+49d) | 2018-06-28 → 2018-08-16 (+49d) |  |  | none → 4, 13, 14 | constraint must start on 2018-05-04 → start no earlier than 2018-06-22 |
| 17 | **Mechanical Design** | 2018-05-04 → 2018-06-22 (+49d) | 2018-06-28 → 2018-08-16 (+49d) |  | 0d → 15d |  |  |
| 18 | Production line control software program | 2018-05-04 → 2018-06-22 (+49d) | 2018-06-28 → 2018-08-16 (+49d) |  | 0d → 15d | none → 14, 4 | constraint must start on 2018-05-04 → start no earlier than 2018-06-22 |
| 19 | Production train design | 2018-05-04 → 2018-06-22 (+49d) | 2018-06-28 → 2018-08-16 (+49d) |  | 0d → 15d | none → 14, 4 | constraint must start on 2018-05-04 → start no earlier than 2018-06-22 |
| 20 | **Preconstruction** | 2018-03-01 → 2018-08-13 (+165d) | 2018-07-18 → 2018-10-04 (+78d) | 100d → 39d | 162d → 0d |  |  |
| 21 | Waste Acceptance Criteria | 2018-06-08 → 2018-08-17 (+70d) | 2018-06-28 → 2018-09-06 (+70d) |  | 176d → 0d | none → 16 | constraint start no earlier than 2018-06-08 → start no earlier than 2018-08-12 |
| 22 | Quality Assurance | 2018-06-18 → 2018-09-07 (+81d) | 2018-06-29 → 2018-09-20 (+83d) |  | 175d → 0d | none → 21, 18, 19, 16 | constraint start no earlier than 2018-06-17 → start no earlier than 2018-08-26 |
| 23 | Subcontractor Training | 2018-06-11 → 2018-08-13 (+63d) | 2018-07-18 → 2018-09-21 (+65d) | 28d → 30d | 162d → 9d | none → 8, 11 | constraint start no earlier than 2018-06-11 → start no earlier than 2018-08-12 |
| 24 | Readiness Review | 2018-07-09 → 2018-09-21 (+74d) | 2018-07-18 → 2018-10-01 (+75d) | 8d → 7d | 162d → 0d | none → 22, 21 | constraint start no earlier than 2018-07-08 → none |
| 25 | Site-clearing permission | 2018-03-01 → 2018-10-02 (+215d) | 2018-03-01 → 2018-10-04 (+217d) | 1d → 3d | 261d → 0d | none → 24 | constraint none → start no earlier than 2018-10-02; resources none → Andy Johns |
| 26 | **Construction** | 2018-06-29 → 2018-10-05 (+98d) | 2018-07-26 → 2018-12-27 (+154d) | 20d → 60d |  | none → 23 |  |
| 27 | Site-clearing | 2018-06-29 → 2018-10-05 (+98d) | 2018-07-26 → 2018-11-01 (+98d) |  |  | none → 7, 25 | constraint must start on 2018-06-29 → start no earlier than 2018-07-29 |
| 28 | **Building of Facility** | 2018-06-29 → 2018-11-02 (+126d) | 2018-06-29 → 2018-12-27 (+181d) | 1d → 40d | 175d → 0d |  | resources Daniel Lee; Justine Leakey; Derek Rivett; Manzi Nisela → none |
| 29 | Foundation | 2018-06-29 → 2018-11-02 (+126d) | 2018-06-29 → 2018-11-15 (+139d) | 1d → 10d | 175d → 0d | none → 27 | constraint none → start no earlier than 2018-04-08; resources none → Daniel Lee |
| 30 | Structures | 2018-06-29 → 2018-11-16 (+140d) | 2018-06-29 → 2018-11-29 (+153d) | 1d → 10d | 175d → 0d | none → 29 | constraint none → start no earlier than 2018-01-28; resources none → Derek Rivett |
| 31 | Roofing | 2018-06-29 → 2018-11-30 (+154d) | 2018-06-29 → 2018-12-13 (+167d) | 1d → 10d | 175d → 0d | none → 30 | constraint none → start no earlier than 2018-04-15; resources none → Justine Leakey |
| 32 | Water Proofing | 2018-06-29 → 2018-12-14 (+168d) | 2018-06-29 → 2018-12-27 (+181d) | 1d → 10d | 175d → 0d | none → 31 | constraint none → start no earlier than 2018-03-18; resources none → Manzi Nisela |
| 33 | Building Electrification | 2018-06-29 → 2018-12-14 (+168d) | 2018-06-29 → 2018-12-27 (+181d) | 1d → 10d | 175d → 0d | none → 31 | constraint none → start no earlier than 2018-02-25; resources none → Ollie Volta |
| 34 | **Installation** | 2018-11-02 → 2018-12-28 (+56d) | 2019-01-23 → 2019-03-07 (+43d) | 59d → 50d |  |  |  |
| 35 | Install semi-automatic woodworking production train | 2018-11-02 → 2018-12-28 (+56d) | 2018-12-27 → 2019-01-24 (+28d) | 40d → 20d |  | none → 19, 24, 28 | constraint must start on 2018-11-02 → start no earlier than 2018-03-04 |
| 36 | Paint shop installation | 2018-11-30 → 2019-01-25 (+56d) | 2018-12-20 → 2019-02-14 (+56d) |  | 51d → 0d | none → 28, 35 | constraint start no earlier than 2018-11-30 → start no earlier than 2018-02-25 |
| 37 | Hardware Installation | 2018-12-21 → 2019-02-15 (+56d) | 2019-01-03 → 2019-02-28 (+56d) |  |  | none → 36, 35 | constraint must start on 2018-12-21 → start no earlier than 2018-02-25; resources Ollie Volta → Elias Makoti |
| 38 | Software Installation | 2019-01-04 → 2019-03-01 (+56d) | 2019-01-10 → 2019-03-07 (+56d) |  |  | none → 37 | constraint must start on 2019-01-04 → start no earlier than 2018-02-25 |
| 39 | Install compressor | 2019-01-11 → 2019-02-15 (+35d) | 2019-01-16 → 2019-02-20 (+35d) |  | 0d → 11d | none → 36 | constraint must start on 2019-01-11 → start no earlier than 2018-03-04 |
| 40 | Install Air-conditioning | 2019-01-18 → 2019-02-21 (+34d) | 2019-01-23 → 2019-02-26 (+34d) |  | 0d → 20d | none → 39 | constraint must start on 2019-01-18 → start no earlier than 2018-02-25 |
| 41 | **Final Inspection** | 2019-02-04 → 2018-12-28 (-38d) | 2019-02-26 → 2019-03-19 (+21d) | 17d → 58d | 3d → 0d |  |  |
| 42 | Complete production train inspection | 2019-02-04 → 2019-03-08 (+32d) | 2019-02-08 → 2019-03-14 (+34d) |  | 15d → 0d | none → 35, 38 | constraint start no earlier than 2019-02-04 → start no earlier than 2018-02-18 |
| 43 | Paint shop inspection | 2019-02-11 → 2019-02-21 (+10d) | 2019-02-15 → 2019-02-27 (+12d) |  | 10d → 11d | none → 36, 39 | constraint start no earlier than 2019-02-11 → start no earlier than 2018-02-25 |
| 44 | Building Inspection | 2019-02-18 → 2018-12-28 (-52d) | 2019-02-21 → 2019-01-02 (-50d) |  | 6d → 51d | none → 28 | constraint start no earlier than 2019-02-16 → start no earlier than 2018-12-28 |
| 45 | Final approval | 2019-02-22 → 2019-03-15 (+21d) | 2019-02-26 → 2019-03-19 (+21d) |  | 3d → 0d | none → 42, 43, 44 | constraint start no earlier than 2019-02-22 → start no earlier than 2018-02-25 |
| 46 | **Commissioning** | 2019-02-25 → 2019-03-20 (+23d) | 2019-03-01 → 2019-03-26 (+25d) |  |  |  |  |
| 47 | Production start-up | 2019-02-25 → 2019-03-20 (+23d) | 2019-03-01 → 2019-03-26 (+25d) |  |  | none → 45 | constraint finish no earlier than 2019-03-01 → start no earlier than 2018-02-25 |

## Version 4 (saved 2019-04-06)

Note of the change: Adding sociology essay

Last finish stays 2019-03-26.

Added:

| ID | Task | Duration | Start | Finish | Predecessors |
| --- | --- | --- | --- | --- | --- |
| 9 | Milestone 1 | 0d | 2018-06-01 | 2018-06-01 | 8 |
| 27 | Milestone 2 | 0d | 2018-10-05 | 2018-10-05 | 26 |
| 48 | Milestone 3 | 0d | 2019-03-20 | 2019-03-20 | 47 |

Changed:

| ID | Task | Finish | Other |
| --- | --- | --- | --- |
| 2 | **Planning** | 2018-05-31 → 2018-06-01 (+1d) |  |
| 6 | **Engage Contractors** | 2018-05-31 → 2018-06-01 (+1d) |  |
| 21 | **Preconstruction** | 2018-10-04 → 2018-10-05 (+1d) |  |
| 29 | Site-clearing |  | resources Daniel Lee → Randy Schepers |
| 31 | Foundation |  | resources Daniel Lee → Randy Schepers |
| 43 | **Final Inspection** | 2019-03-19 → 2019-03-20 (+1d) |  |
| 50 | Production start-up |  | resources Andy Johns → Andy Johns; Miles Mchunu |
